# 一期项目计划

Schedule from MS Project, 2014-12-16 to 2015-01-19.
Microsoft

## Calendars

- 标准: Mon-Fri 08:00-12:00, 13:00-17:00; Sat-Sun off.

## Resources

| Resource |
| --- |
| zhc |
| js |
| ljz |
| zyq |

## Schedule

| ID | WBS | Task | Type | Duration | Start | Finish | Predecessors | Total slack | Free slack | Resources | Work |
| --- | --- | --- | --- | --- | --- | --- | --- | --- | --- | --- | --- |
| 1 | 1 | **前端PC** |  | 22.5d? | 2014-12-16 08:00 | 2015-01-15 12:00 |  | 0d |  |  | 716h |
| 2 | 1.1 | **PC商城** |  | 22.5d? | 2014-12-16 08:00 | 2015-01-15 12:00 |  | 0d |  |  | 716h |
| 3 | 1.1.1 | **商品分类展示** |  | 2.5d | 2014-12-31 08:00 | 2015-01-02 12:00 | 83 | 5.5d | 0d | zhc | 40h |
| 4 | 1.1.1.1 | 按婴儿时间线分类展示 |  | 1d | 2014-12-31 08:00 | 2014-12-31 17:00 |  | 5.5d | 0d | zhc | 8h |
| 5 | 1.1.1.2 | 按用品分类展示 |  | 0.5d | 2015-01-01 08:00 | 2015-01-01 12:00 | 4 | 5.5d | 0d | zhc | 4h |
| 6 | 1.1.1.3 | 按服务类别分类展示 |  | 0.5d | 2015-01-01 13:00 | 2015-01-01 17:00 | 5 | 5.5d | 0d | zhc | 4h |
| 7 | 1.1.1.4 | 按品牌分类展示 |  | 0.5d | 2015-01-02 08:00 | 2015-01-02 12:00 | 6 | 5.5d |  | zhc | 4h |
| 8 | 1.1.2 | **商品展示** |  | 3.5d | 2015-01-02 13:00 | 2015-01-07 17:00 | 3 | 5.5d |  | zhc | 56h |
| 9 | 1.1.2.1 | 按销量排序对商品列表展示 |  | 1d | 2015-01-02 13:00 | 2015-01-05 12:00 |  | 5.5d | 0d | zhc | 8h |
| 10 | 1.1.2.2 | 按价格排序对商品列表展示 |  | 0.5d | 2015-01-05 13:00 | 2015-01-05 17:00 | 9 | 5.5d | 0d | zhc | 4h |
| 11 | 1.1.2.3 | 按上架时间排序(默认)对商品列表展示 |  | 0.5d | 2015-01-06 08:00 | 2015-01-06 12:00 | 10 | 5.5d | 0d | zhc | 4h |
| 12 | 1.1.2.4 | 商品详情基本信息前端展示 |  | 0.5d | 2015-01-06 13:00 | 2015-01-06 17:00 | 11 | 5.5d | 0d | zhc | 4h |
| 13 | 1.1.2.5 | 商品详情图片信息前端展示 |  | 0.5d | 2015-01-07 08:00 | 2015-01-07 12:00 | 12 | 5.5d | 0d | zhc | 4h |
| 14 | 1.1.2.6 | 商品按名称或关键字搜索 |  | 0.5d | 2015-01-07 13:00 | 2015-01-07 17:00 | 13 | 5.5d |  | zhc | 4h |
| 15 | 1.1.3 | **购物车管理** |  | 2d? | 2014-12-22 08:00 | 2014-12-23 17:00 |  | 0d |  | zyq | 72h |
| 16 | 1.1.3.1 | **添加购物车** |  | 1d | 2014-12-22 08:00 | 2014-12-22 17:00 |  | 0d |  |  | 8h |
| 17 | 1.1.3.1.1 | 向购物车中增加商品 | manual | 1d | 2014-12-22 08:00 | 2014-12-22 17:00 |  |  |  | zyq | 8h |
| 18 | 1.1.3.2 | **购物车维护** |  | 2d? | 2014-12-22 08:00 | 2014-12-23 17:00 |  | 0d |  |  | 48h |
| 19 | 1.1.3.2.1 | 继续向购物车中添加商品 | manual | 1d | 2014-12-22 08:00 | 2014-12-22 17:00 |  |  |  | zyq | 8h |
| 20 | 1.1.3.2.2 | 修改数量 | manual | 1d | 2014-12-22 08:00 | 2014-12-22 17:00 |  |  |  | zyq | 8h |
| 21 | 1.1.3.2.3 | 选择商品 | manual | 1d | 2014-12-23 08:00 | 2014-12-23 17:00 | 20 |  |  | zyq | 8h |
| 22 | 1.1.3.2.4 | 从购物车中删除商品 | manual | 1d? | 2014-12-23 08:00 | 2014-12-23 17:00 | 20 |  |  | zyq | 8h |
| 23 | 1.1.3.2.5 | 所选商品的金额汇总计算 | manual | 1d? | 2014-12-23 08:00 | 2014-12-23 17:00 | 20 |  |  | zyq | 8h |
| 24 | 1.1.3.2.6 | 去结算 | manual | 1d? | 2014-12-23 08:00 | 2014-12-23 17:00 | 20 |  |  | zyq | 8h |

| ID | WBS | Task | Type | Duration | Start | Finish | Predecessors | Total slack | Free slack | Resources | Work |
| --- | --- | --- | --- | --- | --- | --- | --- | --- | --- | --- | --- |
| 25 | 1.1.4 | **订单信息核对** |  | 7.5d | 2014-12-16 08:00 | 2014-12-25 12:00 |  | 0d |  | js | 180h |
| 26 | 1.1.4.1 | **收货人信息维护** |  | 2d | 2014-12-16 08:00 | 2014-12-17 17:00 |  | 0d |  | js | 32h |
| 27 | 1.1.4.1.1 | 新增收货人信息 | manual | 0.5d | 2014-12-16 08:00 | 2014-12-16 12:00 |  |  |  | js | 4h |
| 28 | 1.1.4.1.2 | 删除收货人信息 |  | 0.5d | 2014-12-16 13:00 | 2014-12-16 17:00 | 27 | 7d | 0d | js | 4h |
| 29 | 1.1.4.1.3 | 修改收货人信息 |  | 0.5d | 2014-12-17 08:00 | 2014-12-17 12:00 | 28 | 7d | 0d | js | 4h |
| 30 | 1.1.4.1.4 | 设置默认收货人信息 |  | 0.5d | 2014-12-17 13:00 | 2014-12-17 17:00 | 29 | 7d | 0d | js | 4h |
| 31 | 1.1.4.2 | **支付/配送信息维护** |  | 2d | 2014-12-18 08:00 | 2014-12-19 17:00 |  | 7d |  | js | 32h |
| 32 | 1.1.4.2.1 | 设置支付方式 |  | 1d | 2014-12-18 08:00 | 2014-12-18 17:00 | 30 | 7d | 0d | js | 8h |
| 33 | 1.1.4.2.2 | 设置配送方式 |  | 1d | 2014-12-19 08:00 | 2014-12-19 17:00 | 32 | 7d | 0d | js | 8h |
| 34 | 1.1.4.3 | **发票信息维护** |  | 1.5d | 2014-12-22 08:00 | 2014-12-23 12:00 |  | 7d |  | js | 24h |
| 35 | 1.1.4.3.1 | 新增发票信息 |  | 0.5d | 2014-12-22 08:00 | 2014-12-22 12:00 | 33 | 7d | 0d | js | 4h |
| 36 | 1.1.4.3.2 | 修改发票信息 |  | 0.5d | 2014-12-22 13:00 | 2014-12-22 17:00 | 35 | 7d | 0d | js | 4h |
| 37 | 1.1.4.3.3 | 删除发票信息 |  | 0.5d | 2014-12-23 08:00 | 2014-12-23 12:00 | 36 | 7d | 0d | js | 4h |
| 38 | 1.1.4.4 | **结算** |  | 2d | 2014-12-23 13:00 | 2014-12-25 12:00 |  | 7d |  | js | 32h |
| 39 | 1.1.4.4.1 | 支付通道对接 |  | 1d | 2014-12-23 13:00 | 2014-12-24 12:00 | 37 | 7d | 0d | js | 8h |
| 40 | 1.1.4.4.2 | 结算交易提交 |  | 0.5d | 2014-12-24 13:00 | 2014-12-24 17:00 | 39 | 7d | 0d | js | 4h |
| 41 | 1.1.4.4.3 | 交易成功/失败提示及跳转页面 |  | 0.5d | 2014-12-25 08:00 | 2014-12-25 12:00 | 40 | 7d | 0d | js | 4h |
| 42 | 1.1.5 | **虚拟商品订单处理** |  | 3d | 2014-12-25 13:00 | 2014-12-30 12:00 |  | 7d |  | js | 48h |
| 43 | 1.1.5.1 | 订单内容信息展示 |  | 1d | 2014-12-25 13:00 | 2014-12-26 12:00 | 41 | 7d | 0d | js | 8h |
| 44 | 1.1.5.2 | 订单信息短信通知 |  | 1d | 2014-12-26 13:00 | 2014-12-29 12:00 | 43 | 7d | 0d | js | 8h |
| 45 | 1.1.5.3 | 订单信息重发短信 |  | 0.5d | 2014-12-29 13:00 | 2014-12-29 17:00 | 44 | 7d | 0d | js | 4h |
| 46 | 1.1.5.4 | 重发手机设置 |  | 0.5d | 2014-12-30 08:00 | 2014-12-30 12:00 | 45 | 7d | 0d | js | 4h |
| 47 | 1.1.6 | **认证** |  | 7d | 2015-01-06 13:00 | 2015-01-15 12:00 |  | 0d |  | ljz | 168h |
| 48 | 1.1.6.1 | **注册** |  | 3d | 2015-01-06 13:00 | 2015-01-09 12:00 |  | 0d |  | ljz | 48h |
| 49 | 1.1.6.1.1 | 注册基本信息添加 |  | 1d | 2015-01-06 13:00 | 2015-01-07 12:00 | 130 | 0d |  | ljz | 8h |
| 50 | 1.1.6.1.2 | 短信验证 |  | 2d | 2015-01-07 13:00 | 2015-01-09 12:00 | 49 | 0d |  | ljz | 16h |

| ID | WBS | Task | Type | Duration | Start | Finish | Predecessors | Total slack | Resources | Work |
| --- | --- | --- | --- | --- | --- | --- | --- | --- | --- | --- |
| 51 | 1.1.6.2 | **登录** |  | 2d | 2015-01-09 13:00 | 2015-01-13 12:00 |  | 0d | ljz | 32h |
| 52 | 1.1.6.2.1 | 登录 |  | 1d | 2015-01-09 13:00 | 2015-01-12 12:00 | 50 | 0d | ljz | 8h |
| 53 | 1.1.6.2.2 | 基于cookie的安全认证 |  | 1d | 2015-01-12 13:00 | 2015-01-13 12:00 | 52 | 0d | ljz | 8h |
| 54 | 1.1.6.3 | **密码维护** |  | 2d | 2015-01-13 13:00 | 2015-01-15 12:00 |  | 0d | ljz | 32h |
| 55 | 1.1.6.3.1 | 密码修改 |  | 1d | 2015-01-13 13:00 | 2015-01-14 12:00 | 53 | 0d | ljz | 8h |
| 56 | 1.1.6.3.2 | 密码找回 |  | 1d | 2015-01-14 13:00 | 2015-01-15 12:00 | 55 | 0d | ljz | 8h |
| 57 | 1.1.7 | **人个中心** |  | 4d? | 2014-12-24 08:00 | 2014-12-29 17:00 |  | 0d | zyq | 152h |
| 58 | 1.1.7.1 | **个人主页** |  | 1d? | 2014-12-24 08:00 | 2014-12-24 17:00 |  | 0d |  | 24h |
| 59 | 1.1.7.1.1 | **基本资料维护** |  | 1d? | 2014-12-24 08:00 | 2014-12-24 17:00 |  | 0d |  | 24h |
| 60 | 1.1.7.1.1.1 | 基本资料展示 | manual | 1d? | 2014-12-24 08:00 | 2014-12-24 17:00 | 24 |  | zyq | 8h |
| 61 | 1.1.7.1.1.2 | 基本资料添加 | manual | 1d? | 2014-12-24 08:00 | 2014-12-24 17:00 | 24 |  | zyq | 8h |
| 62 | 1.1.7.1.1.3 | 基本资料修改 | manual | 1d? | 2014-12-24 08:00 | 2014-12-24 17:00 | 24 |  | zyq | 8h |
| 63 | 1.1.7.2 | **我的交易** |  | 1d? | 2014-12-25 08:00 | 2014-12-25 17:00 |  | 0d |  | 40h |
| 64 | 1.1.7.2.1 | **我的订单** |  | 1d? | 2014-12-25 08:00 | 2014-12-25 17:00 |  | 0d |  | 40h |
| 65 | 1.1.7.2.1.1 | 订单信息列表展示 | manual | 1d? | 2014-12-25 08:00 | 2014-12-25 17:00 | 62 |  | zyq | 8h |
| 66 | 1.1.7.2.1.2 | 订单查看详细信息 | manual | 1d? | 2014-12-25 08:00 | 2014-12-25 17:00 | 62 |  | zyq | 8h |
| 67 | 1.1.7.2.1.3 | 订单查询 | manual | 1d? | 2014-12-25 08:00 | 2014-12-25 17:00 | 62 |  | zyq | 8h |
| 68 | 1.1.7.2.1.4 | 订单删除 | manual | 1d? | 2014-12-25 08:00 | 2014-12-25 17:00 | 62 |  | zyq | 8h |
| 69 | 1.1.7.2.1.5 | 订单取消 | manual | 1d? | 2014-12-25 08:00 | 2014-12-25 17:00 | 62 |  | zyq | 8h |
| 70 | 1.1.7.3 | **客户服务** |  | 2d? | 2014-12-26 08:00 | 2014-12-29 17:00 |  | 0d |  | 56h |
| 71 | 1.1.7.3.1 | **订单取消记录** |  | 1d? | 2014-12-26 08:00 | 2014-12-26 17:00 |  | 0d |  | 16h |
| 72 | 1.1.7.3.1.1 | 取消订单列表展示 | manual | 1d? | 2014-12-26 08:00 | 2014-12-26 17:00 | 69 |  | zyq | 8h |
| 73 | 1.1.7.3.1.2 | 取消订单进度查看 | manual | 1d? | 2014-12-26 08:00 | 2014-12-26 17:00 | 69 |  | zyq | 8h |
| 74 | 1.1.7.3.2 | **退换货** |  | 1d? | 2014-12-29 08:00 | 2014-12-29 17:00 |  | 0d |  | 40h |
| 75 | 1.1.7.3.2.1 | 申请退换货 | manual | 1d? | 2014-12-29 08:00 | 2014-12-29 17:00 | 73 |  | zyq | 8h |
| 76 | 1.1.7.3.2.2 | 查看退换货记录 | manual | 1d? | 2014-12-29 08:00 | 2014-12-29 17:00 | 73 |  | zyq | 8h |
| 77 | 1.1.7.3.2.3 | 查看退换货明细/退款明细 | manual | 1d? | 2014-12-29 08:00 | 2014-12-29 17:00 | 73 |  | zyq | 8h |
| 78 | 1.1.7.3.2.4 | 查看退款记录 | manual | 1d? | 2014-12-29 08:00 | 2014-12-29 17:00 | 73 |  | zyq | 8h |
| 79 | 1.1.7.3.2.5 | 查看退款明细 | manual | 1d? | 2014-12-29 08:00 | 2014-12-29 17:00 | 73 |  | zyq | 8h |

| ID | WBS | Task | Type | Duration | Start | Finish | Predecessors | Total slack | Free slack | Resources | Work |
| --- | --- | --- | --- | --- | --- | --- | --- | --- | --- | --- | --- |
| 80 | 2 | **前端移动** |  | 1d? | 2014-12-16 08:00 | 2014-12-16 17:00 |  | 0d |  |  |  |
| 81 | 2.1 | 暂无-等移动端开发提接口需求 | manual | 1d? | 2014-12-16 08:00 | 2014-12-16 17:00 |  |  |  |  |  |
| 82 | 3 | **后端** |  | 18d? | 2014-12-16 08:00 | 2015-01-08 17:00 |  | 0d |  |  | 848h |
| 83 | 3.1 | **商品管理系统** |  | 11d | 2014-12-16 08:00 | 2014-12-30 17:00 |  | 5.5d | 0d | zhc | 264h |
| 84 | 3.1.1 | **商品分类后台维护** |  | 2.5d | 2014-12-16 08:00 | 2014-12-18 12:00 |  | 5.5d | 0d | zhc | 40h |
| 85 | 3.1.1.1 | 商品分类增加 |  | 1d | 2014-12-16 08:00 | 2014-12-16 17:00 |  | 5.5d | 0d | zhc | 8h |
| 86 | 3.1.1.2 | 商品分类修改 |  | 0.5d | 2014-12-17 08:00 | 2014-12-17 12:00 | 85 | 5.5d | 0d | zhc | 4h |
| 87 | 3.1.1.3 | 商品分类删除 |  | 0.5d | 2014-12-17 13:00 | 2014-12-17 17:00 | 86 | 5.5d | 0d | zhc | 4h |
| 88 | 3.1.1.4 | 商品分类查询 |  | 0.5d | 2014-12-18 08:00 | 2014-12-18 12:00 | 87 | 5.5d |  | zhc | 4h |
| 89 | 3.1.2 | **商品信息后台维护** |  | 5.5d | 2014-12-18 13:00 | 2014-12-25 17:00 |  | 5.5d |  | zhc | 88h |
| 90 | 3.1.2.1 | 商品基础信息增加 |  | 1d | 2014-12-18 13:00 | 2014-12-19 12:00 | 84 | 5.5d | 0d | zhc | 8h |
| 91 | 3.1.2.2 | 商品基础信息修改 |  | 0.5d | 2014-12-19 13:00 | 2014-12-19 17:00 | 90 | 5.5d | 0d | zhc | 4h |
| 92 | 3.1.2.3 | 商品基础信息删除 |  | 0.5d | 2014-12-22 08:00 | 2014-12-22 12:00 | 91 | 5.5d | 0d | zhc | 4h |
| 93 | 3.1.2.4 | 商品基础信息查询 |  | 0.5d | 2014-12-22 13:00 | 2014-12-22 17:00 | 92 | 5.5d | 0d | zhc | 4h |
| 94 | 3.1.2.5 | 商品图片上传 |  | 2d | 2014-12-23 08:00 | 2014-12-24 17:00 | 93 | 5.5d | 0d | zhc | 16h |
| 95 | 3.1.2.6 | 商品图片删除 |  | 1d | 2014-12-25 08:00 | 2014-12-25 17:00 | 94 | 5.5d | 0d | zhc | 8h |
| 96 | 3.1.3 | **商品相关接口服务** |  | 3d | 2014-12-26 08:00 | 2014-12-30 17:00 |  | 5.5d |  | zhc | 48h |
| 97 | 3.1.3.1 | 商品分类接口服务 |  | 1d | 2014-12-26 08:00 | 2014-12-26 17:00 | 95 | 5.5d | 0d | zhc | 8h |
| 98 | 3.1.3.2 | 商品列表接口服务 |  | 0.5d | 2014-12-29 08:00 | 2014-12-29 12:00 | 97 | 5.5d | 0d | zhc | 4h |
| 99 | 3.1.3.3 | 商品详情接口服务 |  | 0.5d | 2014-12-29 13:00 | 2014-12-29 17:00 | 98 | 5.5d | 0d | zhc | 4h |
| 100 | 3.1.3.4 | 购物车所用商品接口服务 |  | 0.5d | 2014-12-30 08:00 | 2014-12-30 12:00 | 99 | 5.5d | 0d | zhc | 4h |
| 101 | 3.1.3.5 | 商品图片接口服务 |  | 0.5d | 2014-12-30 13:00 | 2014-12-30 17:00 | 100 | 5.5d |  | zhc | 4h |
| 102 | 3.2 | **订单管理系统** |  | 7.5d | 2014-12-30 13:00 | 2015-01-08 17:00 |  | 7d |  | js | 180h |
| 103 | 3.2.1 | **订单信息** |  | 2d | 2014-12-30 13:00 | 2015-01-01 12:00 |  | 7d |  | js | 32h |
| 104 | 3.2.1.1 | 订单信息查询 |  | 0.5d | 2014-12-30 13:00 | 2014-12-30 17:00 | 46 | 7d | 0d | js | 4h |
| 105 | 3.2.1.2 | 订单销售量接口服务 |  | 0.5d | 2014-12-31 08:00 | 2014-12-31 12:00 | 104 | 7d | 0d | js | 4h |
| 106 | 3.2.1.3 | 拆单服务 |  | 1d | 2014-12-31 13:00 | 2015-01-01 12:00 | 105 | 7d | 0d | js | 8h |

| ID | WBS | Task | Type | Duration | Start | Finish | Predecessors | Total slack | Free slack | Resources | Work |
| --- | --- | --- | --- | --- | --- | --- | --- | --- | --- | --- | --- |
| 107 | 3.2.2 | **订单取消** |  | 5.5d | 2015-01-01 13:00 | 2015-01-08 17:00 |  | 7d |  | js | 88h |
| 108 | 3.2.2.1 | 订单自动取消 |  | 0.5d | 2015-01-01 13:00 | 2015-01-01 17:00 | 106 | 7d | 0d | js | 4h |
| 109 | 3.2.2.2 | 订单审核取消 |  | 0.5d | 2015-01-02 08:00 | 2015-01-02 12:00 | 108 | 7d | 0d | js | 4h |
| 110 | 3.2.2.3 | 订单退款 |  | 2d | 2015-01-02 13:00 | 2015-01-06 12:00 | 109 | 7d | 0d | js | 16h |
| 111 | 3.2.2.4 | 订单取消查询 |  | 0.5d | 2015-01-06 13:00 | 2015-01-06 17:00 | 110 | 7d | 0d | js | 4h |
| 112 | 3.2.2.5 | 订单取消接口服务 |  | 1d | 2015-01-07 08:00 | 2015-01-07 17:00 | 111 | 7d | 0d | js | 8h |
| 113 | 3.2.2.6 | 订单取消审核状态接口服务 |  | 1d | 2015-01-08 08:00 | 2015-01-08 17:00 | 112 | 7d |  | js | 8h |
| 114 | 3.3 | **退换货管理系统** |  | 2d? | 2014-12-30 08:00 | 2014-12-31 17:00 |  | 0d |  | zyq | 56h |
| 115 | 3.3.1 | 退换货申请审批 | manual | 1d? | 2014-12-30 08:00 | 2014-12-30 17:00 | 79 |  |  | zyq | 8h |
| 116 | 3.3.2 | 退换货退款 | manual | 1d? | 2014-12-30 08:00 | 2014-12-30 17:00 | 79 |  |  | zyq | 8h |
| 117 | 3.3.3 | 退换货查询 | manual | 1d? | 2014-12-30 08:00 | 2014-12-30 17:00 | 79 |  |  | zyq | 8h |
| 118 | 3.3.4 | 退换货接口服务 | manual | 1d? | 2014-12-31 08:00 | 2014-12-31 17:00 | 117 |  |  | zyq | 8h |
| 119 | 3.3.5 | 退换货审核状态接口服务 | manual | 1d? | 2014-12-31 08:00 | 2014-12-31 17:00 | 117 |  |  | zyq | 8h |
| 120 | 3.4 | **支付平台** |  | 4d? | 2015-01-01 08:00 | 2015-01-06 17:00 |  | 0d |  | zyq | 80h |
| 121 | 3.4.1 | 支付通道对接(支付宝) | manual | 2d | 2015-01-01 08:00 | 2015-01-02 17:00 | 119 |  |  | zyq | 16h |
| 122 | 3.4.2 | 支付信息查询 | manual | 2d | 2015-01-05 08:00 | 2015-01-06 17:00 | 121 |  |  | zyq | 16h |
| 123 | 3.4.3 | 支付统计 | manual | 1d? | 2015-01-05 08:00 | 2015-01-05 17:00 | 121 |  |  | zyq | 8h |
| 124 | 3.4.4 | 正向支付接口服务 | manual | 1d? | 2015-01-05 08:00 | 2015-01-05 17:00 | 121 |  |  | zyq | 8h |
| 125 | 3.5 | **短信管理平台** |  | 10d | 2014-12-23 13:00 | 2015-01-06 12:00 |  | 0d |  | ljz | 160h |
| 126 | 3.5.1 | SP服务对接 |  | 2d | 2014-12-23 13:00 | 2014-12-25 12:00 | 133 | 0d |  | ljz | 16h |
| 127 | 3.5.2 | 高稳定异步发送 |  | 2d | 2014-12-25 13:00 | 2014-12-29 12:00 | 126 | 0d |  | ljz | 16h |
| 128 | 3.5.3 | 短信接口服务 |  | 2d | 2014-12-29 13:00 | 2014-12-31 12:00 | 127 | 0d |  | ljz | 16h |
| 129 | 3.5.4 | 发送短信查询 |  | 2d | 2014-12-31 13:00 | 2015-01-02 12:00 | 128 | 0d |  | ljz | 16h |
| 130 | 3.5.5 | 失败报警 |  | 2d | 2015-01-02 13:00 | 2015-01-06 12:00 | 129 | 0d |  | ljz | 16h |

| ID | WBS | Task | Type | Duration | Start | Finish | Predecessors | Total slack | Resources | Work |
| --- | --- | --- | --- | --- | --- | --- | --- | --- | --- | --- |
| 131 | 3.6 | **商城用户管理系统** |  | 3d | 2014-12-18 13:00 | 2014-12-23 12:00 |  | 0d | ljz | 48h |
| 132 | 3.6.1 | 用户查询 |  | 1d | 2014-12-18 13:00 | 2014-12-19 12:00 | 166 | 0d | ljz | 8h |
| 133 | 3.6.2 | 用户统计 |  | 2d | 2014-12-19 13:00 | 2014-12-23 12:00 | 132 | 0d | ljz | 16h |
| 134 | 3.7 | **权限管理系统** |  | 2.5d | 2014-12-16 08:00 | 2014-12-18 12:00 |  | 0d | ljz | 60h |
| 135 | 3.7.1 | **部门管理** |  | 0.4d | 2014-12-16 08:00 | 2014-12-16 11:12 |  | 0d | ljz | 6.4h |
| 136 | 3.7.1.1 | 新增部门信息 | manual | 0.1d | 2014-12-16 08:00 | 2014-12-16 08:48 |  |  | ljz | 0.8h |
| 137 | 3.7.1.2 | 修改部门信息 |  | 0.1d | 2014-12-16 08:48 | 2014-12-16 09:36 | 136 | 0d | ljz | 0.8h |
| 138 | 3.7.1.3 | 删除部门信息 |  | 0.1d | 2014-12-16 09:36 | 2014-12-16 10:24 | 137 | 0d | ljz | 0.8h |
| 139 | 3.7.1.4 | 查询部门信息 |  | 0.1d | 2014-12-16 10:24 | 2014-12-16 11:12 | 138 | 0d | ljz | 0.8h |
| 140 | 3.7.2 | **内部员工管理** |  | 0.5d | 2014-12-16 11:12 | 2014-12-16 16:12 |  | 0d | ljz | 8h |
| 141 | 3.7.2.1 | 新增员工信息 |  | 0.1d | 2014-12-16 11:12 | 2014-12-16 12:00 | 139 | 0d | ljz | 0.8h |
| 142 | 3.7.2.2 | 修改员工信息 |  | 0.1d | 2014-12-16 13:00 | 2014-12-16 13:48 | 141 | 0d | ljz | 0.8h |
| 143 | 3.7.2.3 | 删除员工信息 |  | 0.1d | 2014-12-16 13:48 | 2014-12-16 14:36 | 142 | 0d | ljz | 0.8h |
| 144 | 3.7.2.4 | 查询员工信息 |  | 0.1d | 2014-12-16 14:36 | 2014-12-16 15:24 | 143 | 0d | ljz | 0.8h |
| 145 | 3.7.2.5 | 员工授权配置 |  | 0.1d | 2014-12-16 15:24 | 2014-12-16 16:12 | 144 | 0d | ljz | 0.8h |
| 146 | 3.7.3 | **业务系统** |  | 0.4d | 2014-12-16 16:12 | 2014-12-17 10:24 |  | 0d | ljz | 6.4h |
| 147 | 3.7.3.1 | 新增业务系统信息 |  | 0.1d | 2014-12-16 16:12 | 2014-12-16 17:00 | 145 | 0d | ljz | 0.8h |
| 148 | 3.7.3.2 | 修改业务系统信息 |  | 0.1d | 2014-12-17 08:00 | 2014-12-17 08:48 | 147 | 0d | ljz | 0.8h |
| 149 | 3.7.3.3 | 删除业务系统信息 |  | 0.1d | 2014-12-17 08:48 | 2014-12-17 09:36 | 148 | 0d | ljz | 0.8h |
| 150 | 3.7.3.4 | 查询业务系统信息 |  | 0.1d | 2014-12-17 09:36 | 2014-12-17 10:24 | 149 | 0d | ljz | 0.8h |
| 151 | 3.7.4 | **资源信息** |  | 0.4d | 2014-12-17 10:24 | 2014-12-17 14:36 |  | 0d | ljz | 6.4h |
| 152 | 3.7.4.1 | 新增资源信息 |  | 0.1d | 2014-12-17 10:24 | 2014-12-17 11:12 | 150 | 0d | ljz | 0.8h |
| 153 | 3.7.4.2 | 修改资源信息 |  | 0.1d | 2014-12-17 11:12 | 2014-12-17 12:00 | 152 | 0d | ljz | 0.8h |
| 154 | 3.7.4.3 | 删除资源信息 |  | 0.1d | 2014-12-17 13:00 | 2014-12-17 13:48 | 153 | 0d | ljz | 0.8h |
| 155 | 3.7.4.4 | 查询资源信息 |  | 0.1d | 2014-12-17 13:48 | 2014-12-17 14:36 | 154 | 0d | ljz | 0.8h |

| ID | WBS | Task | Duration | Start | Finish | Predecessors | Total slack | Constraint | Resources | Work |
| --- | --- | --- | --- | --- | --- | --- | --- | --- | --- | --- |
| 156 | 3.7.5 | **角色信息** | 0.5d | 2014-12-17 14:36 | 2014-12-18 09:36 |  | 0d |  | ljz | 8h |
| 157 | 3.7.5.1 | 新增角色信息 | 0.1d | 2014-12-17 14:36 | 2014-12-17 15:24 | 155 | 0d |  | ljz | 0.8h |
| 158 | 3.7.5.2 | 修改角色信息 | 0.1d | 2014-12-17 15:24 | 2014-12-17 16:12 | 157 | 0d |  | ljz | 0.8h |
| 159 | 3.7.5.3 | 删除角色信息 | 0.1d | 2014-12-17 16:12 | 2014-12-17 17:00 | 158 | 0d |  | ljz | 0.8h |
| 160 | 3.7.5.4 | 查询角色信息 | 0.1d | 2014-12-18 08:00 | 2014-12-18 08:48 | 159 | 0d |  | ljz | 0.8h |
| 161 | 3.7.5.5 | 分配资源设置 | 0.1d | 2014-12-18 08:48 | 2014-12-18 09:36 | 160 | 0d |  | ljz | 0.8h |
| 162 | 3.7.6 | **密码管理** | 0.2d | 2014-12-18 09:36 | 2014-12-18 11:12 |  | 0d |  | ljz | 3.2h |
| 163 | 3.7.6.1 | 重置密码 | 0.1d | 2014-12-18 09:36 | 2014-12-18 10:24 | 161 | 0d |  | ljz | 0.8h |
| 164 | 3.7.6.2 | 修改密码 | 0.1d | 2014-12-18 10:24 | 2014-12-18 11:12 | 163 | 0d |  | ljz | 0.8h |
| 165 | 3.7.7 | **接口服务** | 0.1d | 2014-12-18 11:12 | 2014-12-18 12:00 |  | 0d |  | ljz | 1.6h |
| 166 | 3.7.7.1 | 认证接口服务 | 0.1d | 2014-12-18 11:12 | 2014-12-18 12:00 | 164 | 0d |  | ljz | 0.8h |
| 167 | 4 | 系统集成 | 2.5d | 2015-01-15 13:00 | 2015-01-19 17:00 | 2 | 0d | finish no earlier than 2015-01-16 17:00 | js; ljz; zhc; zyq | 80h |
